| TaskID | TaskName | StartDate | EndDate | Duration | Progress | info | DurationUnit | resources | Predecessor |
| --- | --- | --- | --- | --- | --- | --- | --- | --- | --- |
| 1 | Symphony IDE Development | 2025-06-15T06:00:00.000Z | 2026-05-15T15:00:00.000Z | 245 | 45 | Complete development cycle from concept to beta release | day |  |  |
| 2 | · Phase 1: Research & Planning | 2025-06-15T06:00:00.000Z | 2025-08-15T15:00:00.000Z | 44 | 100 | Initial research, architecture decisions, and project planning | day |  |  |
| 3 | · · Open Source Repository Analysis | 2025-06-15T06:00:00.000Z | 2025-07-05T15:00:00.000Z | 15 | 100 | Evaluated Graviton, migrated to Xi-Editor as base | day | amr Amr Muhamed Fathy 100 |  |
| 4 | · · Tech Stack Research | 2025-06-15T06:00:00.000Z | 2025-07-10T15:00:00.000Z | 18 | 100 | Research on Rust, Python, Tauri, React, and best practices | day | amr Amr Muhamed Fathy 50, mahmoud Mahmoud Emad Khairy 50 |  |
| 5 | · · Conductor Model Architecture Decision | 2025-06-20T06:00:00.000Z | 2025-07-15T15:00:00.000Z | 18 | 100 | Decided on microkernel architecture over exokernel | day | amr Amr Muhamed Fathy 100 |  |
| 6 | · · System Architecture Design | 2025-07-01T06:00:00.000Z | 2025-07-25T15:00:00.000Z | 18 | 100 | Complete architectural blueprint including The Pit, Grand Stage, and Conductor | day | amr Amr Muhamed Fathy 100 | 5 |
| 7 | · · Project Documentation | 2025-07-10T06:00:00.000Z | 2025-08-15T15:00:00.000Z | 26 | 100 | Complete technical documentation and architectural guides | day | amr Amr Muhamed Fathy 100 |  |
| 8 | · · Database Strategy Planning | 2025-07-15T06:00:00.000Z | 2025-08-05T15:00:00.000Z | 15 | 100 | Decided on Convex for prototype, FastAPI for production | day | salma Salma Ebrahim Farouk 100 |  |
| 9 | · Phase 2: Infrastructure Preparation | 2025-08-16T06:00:00.000Z | 2025-10-31T15:00:00.000Z | 54 | 85 | Foundation setup including base components, patterns, and initial integrations | day |  | 2 |
| 10 | · · Frontend Base Components | 2025-08-16T06:00:00.000Z | 2025-09-10T15:00:00.000Z | 18 | 90 | Creating reusable UI components, layout structures, and component library foundation | day | amr Amr Muhamed Fathy 20, mahmoud Mahmoud Emad Khairy 80 |  |
| 11 | · · Backend Patterns & Shared Core Types | 2025-08-20T06:00:00.000Z | 2025-09-15T15:00:00.000Z | 19 | 85 | Establishing Rust design patterns, shared types, error handling, and common utilities | day | amr Amr Muhamed Fathy 100, mahmoud Mahmoud Emad Khairy 80 |  |
| 12 | · · Python Database Integration Init | 2025-09-05T06:00:00.000Z | 2025-09-30T15:00:00.000Z | 18 | 80 | Initial Python database layer setup, connection pooling, and basic ORM configuration | day | salma Salma Ebrahim Farouk 100 |  |
| 13 | · · User-Facing WebApp Development | 2025-09-15T06:00:00.000Z | 2025-10-10T15:00:00.000Z | 18 | 75 | Creating public website for product information, downloads, and documentation access | day | amr Amr Muhamed Fathy 100 | 10 |
| 16 | · Phase 3: Core Development | 2025-11-01T06:00:00.000Z | 2025-12-20T15:00:00.000Z | 36 | 60 | Complete frontend addon integration, Rust backend with mocked database, and Conductor boilerplate | day |  | 9 |
| 15 | · · Frontend Addons Seamless Integration | 2025-11-01T06:00:00.000Z | 2025-11-22T15:00:00.000Z | 16 | 70 | Implementing plugin architecture, extension API, and addon loading system for seamless third-party integrations | day | mahmoud Mahmoud Emad Khairy 100 |  |
| 16 | · · Frontend System Components Development | 2025-11-10T06:00:00.000Z | 2025-11-30T15:00:00.000Z | 15 | 65 | Building complete UI system including editor, workflow canvas, configuration panels, and monitoring dashboards | day | mahmoud Mahmoud Emad Khairy 100 |  |
| 17 | · · Rust Backend Core Components (All Carets) | 2025-11-15T06:00:00.000Z | 2025-12-05T15:00:00.000Z | 15 | 60 | Developing all Rust backend carets including Pool Manager, DAG Tracker, Artifact Store, Arbitration Engine, and Stale Manager | day | amr Amr Muhamed Fathy 25, salma Salma Ebrahim Farouk 25, nour Nour El-Din Osama Fathy 25, mostafa Mostafa Mohamed Abdullah Ali 25 |  |
| 18 | · · Mocked Database Layer | 2025-11-20T06:00:00.000Z | 2025-12-10T15:00:00.000Z | 15 | 55 | Creating in-memory mock database for development and testing without external dependencies | day | nour Nour El-Din Osama Fathy 25, mostafa Mostafa Mohamed Abdullah Ali 25 |  |
| 19 | · · Conductor Boilerplate Code | 2025-12-01T06:00:00.000Z | 2025-12-20T15:00:00.000Z | 14 | 50 | Python Conductor framework boilerplate including workflow orchestration skeleton, IPC protocol setup, and basic LLM integration interfaces | day | mostafa Mostafa Mohamed Abdullah Ali 100 | 17,18 |
| 22 | · Phase 4: Database Integration & Conductor Development | 2025-12-21T06:00:00.000Z | 2026-02-10T15:00:00.000Z | 37 | 25 | Full database service integration, intensive Conductor model development, and real frontend pages | day |  | 14 |
| 21 | · · Database Service Creation & Integration | 2025-12-21T06:00:00.000Z | 2026-01-05T15:00:00.000Z | 11 | 40 | Building complete database service layer with migration system, connection management, and query optimization | day | salma Salma Ebrahim Farouk 100, mahmoud Mahmoud Emad Khairy 60 |  |
| 22 | · · Heavy Conductor Model Development | 2025-12-26T06:00:00.000Z | 2026-01-15T15:00:00.000Z | 15 | 30 | Core Conductor orchestration logic, workflow execution engine, LLM provider integrations, and agent communication protocols | day | nour Nour El-Din Osama Fathy 100, mostafa Mostafa Mohamed Abdullah Ali 80 |  |
| 23 | · · Database-Conductor Integration | 2026-01-01T06:00:00.000Z | 2026-01-20T15:00:00.000Z | 14 | 25 | Connecting Conductor workflows to database for state persistence, artifact storage, and workflow history | day | salma Salma Ebrahim Farouk 100, amr Amr Muhamed Fathy 70 | 21,22 |
| 24 | · · Real Frontend Pages Development | 2026-01-10T06:00:00.000Z | 2026-01-30T15:00:00.000Z | 15 | 20 | Building production-ready pages including project management, workflow editor, model configuration, and execution monitoring | day | mahmoud Mahmoud Emad Khairy 100 |  |
| 25 | · · Frontend-Backend API Integration | 2026-01-15T06:00:00.000Z | 2026-02-05T15:00:00.000Z | 15 | 15 | Connecting frontend pages to Rust backend APIs with real-time updates and WebSocket communication | day | mahmoud Mahmoud Emad Khairy 100 | 24 |
| 26 | · · Workflow Execution Testing | 2026-01-25T06:00:00.000Z | 2026-02-10T15:00:00.000Z | 12 | 20 | End-to-end testing of workflow creation, execution, and monitoring through the complete stack | day | amr Amr Muhamed Fathy 90, salma Salma Ebrahim Farouk 70 | 22,23,25 |
| 29 | · Phase 5: Finalization & Integration | 2026-02-11T06:00:00.000Z | 2026-03-15T15:00:00.000Z | 24 | 15 | Complete WebApp, finalize Rust backend, complete database integration, and begin testing | day |  | 20 |
| 28 | · · WebApp Completion & Polish | 2026-02-11T06:00:00.000Z | 2026-02-28T15:00:00.000Z | 13 | 20 | Finalizing public website with download management, documentation portal, community features, and product showcase | day | mahmoud Mahmoud Emad Khairy 100, amr Amr Muhamed Fathy 80 |  |
| 29 | · · Frontend Feature Completion | 2026-02-15T06:00:00.000Z | 2026-03-05T15:00:00.000Z | 14 | 15 | Implementing remaining UI features, polishing user experience, adding keyboard shortcuts, and improving accessibility | day | mahmoud Mahmoud Emad Khairy 90, nour Nour El-Din Osama Fathy 100 |  |
| 30 | · · Rust Backend Finalization | 2026-02-20T06:00:00.000Z | 2026-03-08T15:00:00.000Z | 12 | 10 | Completing all backend carets, optimizing performance, error handling improvements, and API stabilization | day | amr Amr Muhamed Fathy 100, nour Nour El-Din Osama Fathy 90 |  |
| 31 | · · Business Rules Implementation | 2026-02-25T06:00:00.000Z | 2026-03-15T15:00:00.000Z | 14 | 15 | Implementing workflow validation rules, resource constraints, permission systems, and execution policies | day | amr Amr Muhamed Fathy 70 |  |
| 32 | · · Database Integration Finalization | 2026-03-01T06:00:00.000Z | 2026-03-15T15:00:00.000Z | 11 | 10 | Complete database schema, optimize queries, implement caching strategies, and ensure data consistency | day | salma Salma Ebrahim Farouk 100, mahmoud Mahmoud Emad Khairy 60 | 31 |
| 33 | · · Initial System Testing | 2026-03-08T06:00:00.000Z | 2026-03-15T15:00:00.000Z | 6 | 10 | Beginning comprehensive testing including unit tests, integration tests, and initial user scenarios | day | amr Amr Muhamed Fathy 80, mahmoud Mahmoud Emad Khairy 70, salma Salma Ebrahim Farouk 60, mostafa Mostafa Mohamed Abdullah Ali 50, nour Nour El-Din Osama Fathy 50 | 29,30,32 |
| 37 | · Phase 6: Testing & Refinement | 2026-03-16T06:00:00.000Z | 2026-04-05T15:00:00.000Z | 15 | 10 | Comprehensive testing, bug fixes, and system refinement | day |  | 27 |
| 35 | · · Comprehensive Unit Testing | 2026-03-16T06:00:00.000Z | 2026-03-30T15:00:00.000Z | 11 | 15 | Complete unit test coverage for all backend carets, database operations, and Conductor components | day | mahmoud Mahmoud Emad Khairy 100, salma Salma Ebrahim Farouk 80 |  |
| 36 | · · Integration Testing Suite | 2026-03-20T06:00:00.000Z | 2026-04-03T15:00:00.000Z | 10 | 10 | End-to-end integration tests covering frontend-backend-database workflows and cross-component interactions | day | amr Amr Muhamed Fathy 100, mahmoud Mahmoud Emad Khairy 80 |  |
| 37 | · · User Experience Testing & Refinement | 2026-03-23T06:00:00.000Z | 2026-04-05T15:00:00.000Z | 10 | 5 | UI/UX improvements based on internal testing, performance optimization, and user flow refinement | day | mostafa Mostafa Mohamed Abdullah Ali 100, nour Nour El-Din Osama Fathy 100 |  |
| 38 | · · Performance Optimization & Profiling | 2026-03-25T06:00:00.000Z | 2026-04-05T15:00:00.000Z | 9 | 10 | System-wide performance profiling, bottleneck identification, memory optimization, and response time improvements | day | amr Amr Muhamed Fathy 100, mahmoud Mahmoud Emad Khairy 70 |  |
| 39 | · · Bug Triage & Resolution | 2026-03-16T06:00:00.000Z | 2026-04-05T15:00:00.000Z | 15 | 10 | Continuous bug identification, prioritization, and fixes throughout the testing phase | day | amr Amr Muhamed Fathy 70, mahmoud Mahmoud Emad Khairy 60, salma Salma Ebrahim Farouk 50, mostafa Mostafa Mohamed Abdullah Ali 40, nour Nour El-Din Osama Fathy 40 |  |
| 40 | · · Cross-Platform Validation | 2026-03-28T06:00:00.000Z | 2026-04-05T15:00:00.000Z | 6 | 5 | Verify functionality and performance across Windows, macOS, and Linux platforms | day | mahmoud Mahmoud Emad Khairy 80, mostafa Mostafa Mohamed Abdullah Ali 60 | 35,36,37 |

Links (from, to):
- 8 12
- 13 17
