| TaskID | TaskName | StartDate | EndDate | Duration | Progress | info | DurationUnit | resources | Predecessor |
| --- | --- | --- | --- | --- | --- | --- | --- | --- | --- |
| 1 | Symphony IDE Development | 2025-06-15T06:00:00.000Z | 2026-05-15T15:00:00.000Z | 245 | 45 | Complete development cycle from concept to beta release | day |  |  |
| 2 | · Phase 1: Research & Planning | 2025-06-15T06:00:00.000Z | 2025-08-15T15:00:00.000Z | 44 | 100 | Initial research, architecture decisions, and project planning | day |  |  |
| 3 | · · Open Source Repository Analysis | 2025-06-15T06:00:00.000Z | 2025-07-05T15:00:00.000Z | 15 | 100 | Evaluated Graviton, migrated to Xi-Editor as base | day | amr Amr Muhamed Fathy 100 |  |
| 4 | · · Tech Stack Research | 2025-06-15T06:00:00.000Z | 2025-07-10T15:00:00.000Z | 18 | 100 | Research on Rust, Python, Tauri, React, and best practices | day | amr Amr Muhamed Fathy 50, mahmoud Mahmoud Emad Khairy 50 |  |
| 5 | · · Conductor Model Architecture Decision | 2025-06-20T06:00:00.000Z | 2025-07-15T15:00:00.000Z | 18 | 100 | Decided on microkernel architecture over exokernel | day | amr Amr Muhamed Fathy 100 |  |
| 6 | · · System Architecture Design | 2025-07-01T06:00:00.000Z | 2025-07-25T15:00:00.000Z | 18 | 100 | Complete architectural blueprint including The Pit, Grand Stage, and Conductor | day | amr Amr Muhamed Fathy 100 | 5 |
| 7 | · · Project Documentation | 2025-07-10T06:00:00.000Z | 2025-08-15T15:00:00.000Z | 26 | 100 | Complete technical documentation and architectural guides | day | amr Amr Muhamed Fathy 100 |  |
| 8 | · · Database Strategy Planning | 2025-07-15T06:00:00.000Z | 2025-08-05T15:00:00.000Z | 15 | 100 | Decided on Convex for prototype, FastAPI for production | day | salma Salma Ebrahim Farouk 100 |  |
| 9 | · Phase 2: Core Infrastructure (The Pit) | 2025-08-16T06:00:00.000Z | 2025-10-31T15:00:00.000Z | 54 | 85 | Development of core Rust-based infrastructure extensions | day |  | 2 |
| 10 | · · Pool Manager Extension | 2025-08-16T06:00:00.000Z | 2025-09-10T15:00:00.000Z | 18 | 90 | AI model lifecycle management and resource allocation | day | amr Amr Muhamed Fathy 100 |  |
| 11 | · · DAG Tracker Extension | 2025-08-20T06:00:00.000Z | 2025-09-15T15:00:00.000Z | 19 | 85 | Workflow dependency tracking and execution graph management | day | amr Amr Muhamed Fathy 80 |  |
| 12 | · · Artifact Store Extension | 2025-09-05T06:00:00.000Z | 2025-09-30T15:00:00.000Z | 18 | 80 | Data persistence, versioning, and quality scoring system | day | salma Salma Ebrahim Farouk 100 |  |
| 13 | · · Arbitration Engine Extension | 2025-09-15T06:00:00.000Z | 2025-10-10T15:00:00.000Z | 18 | 75 | Resource allocation decisions and conflict resolution | day | amr Amr Muhamed Fathy 100 | 11 |
| 14 | · · Stale Manager Extension | 2025-10-01T06:00:00.000Z | 2025-10-20T15:00:00.000Z | 14 | 80 | Training data curation and storage lifecycle management | day | salma Salma Ebrahim Farouk 100 | 12 |
| 15 | · · Pit Integration Testing | 2025-10-15T06:00:00.000Z | 2025-10-31T15:00:00.000Z | 12 | 90 | Complete integration testing of all Pit components | day | amr Amr Muhamed Fathy 50, salma Salma Ebrahim Farouk 50 | 14 |
| 16 | · Phase 3: Conductor Core Development | 2025-09-15T06:00:00.000Z | 2025-12-15T15:00:00.000Z | 65 | 70 | Python-based RL orchestration engine with microkernel architecture | day |  |  |
| 17 | · · Microkernel Core Implementation | 2025-09-15T06:00:00.000Z | 2025-10-15T15:00:00.000Z | 22 | 85 | Minimal orchestration kernel with extension management | day | amr Amr Muhamed Fathy 100 |  |
| 18 | · · Function Quest Game (FQG) Framework | 2025-10-01T06:00:00.000Z | 2025-11-01T15:00:00.000Z | 22 | 75 | Training ground for RL model using logic puzzles | day | mostafa Mostafa Mohamed Abdullah Ali 100 |  |
| 19 | · · RL Model Training Pipeline | 2025-10-20T06:00:00.000Z | 2025-11-25T15:00:00.000Z | 26 | 65 | Reinforcement learning pipeline using PyTorch/TensorFlow | day | mostafa Mostafa Mohamed Abdullah Ali 80, nour Nour El-Din Osama Fathy 80 | 18 |
| 20 | · · Extension Lifecycle Management | 2025-10-25T06:00:00.000Z | 2025-11-20T15:00:00.000Z | 19 | 70 | Chambering flow: requesting, registration, activation, usage, cleanup | day | amr Amr Muhamed Fathy 100 | 17 |
| 21 | · · Orchestration Intelligence Layer | 2025-11-10T06:00:00.000Z | 2025-12-15T15:00:00.000Z | 26 | 60 | Adaptive workflow selection and failure recovery strategies | day | mostafa Mostafa Mohamed Abdullah Ali 100 | 19,20 |
| 22 | · Phase 4: Backend Development | 2025-10-01T06:00:00.000Z | 2026-01-31T15:00:00.000Z | 85 | 60 | Backend services, API development, and database integration | day |  |  |
| 23 | · · Convex Prototype Database Setup | 2025-10-01T06:00:00.000Z | 2025-10-20T15:00:00.000Z | 14 | 100 | Rapid prototyping database with Convex | day | salma Salma Ebrahim Farouk 100 |  |
| 24 | · · FastAPI Production Backend | 2025-10-15T06:00:00.000Z | 2025-12-15T15:00:00.000Z | 44 | 70 | Production-ready REST API with FastAPI | day | salma Salma Ebrahim Farouk 100 | 23 |
| 25 | · · Extension API Endpoints | 2025-11-01T06:00:00.000Z | 2025-12-20T15:00:00.000Z | 35 | 65 | API for extension marketplace, installation, and management | day | salma Salma Ebrahim Farouk 80 |  |
| 26 | · · AI Model Integration Backend | 2025-11-15T06:00:00.000Z | 2026-01-15T15:00:00.000Z | 44 | 50 | Backend services for AI instrument management and execution | day | mostafa Mostafa Mohamed Abdullah Ali 60, nour Nour El-Din Osama Fathy 60 |  |
| 27 | · · Authentication & Authorization | 2025-12-01T06:00:00.000Z | 2026-01-10T15:00:00.000Z | 29 | 55 | User authentication, session management, and permission system | day | salma Salma Ebrahim Farouk 100 |  |
| 28 | · · Backend Testing & Optimization | 2026-01-05T06:00:00.000Z | 2026-01-31T15:00:00.000Z | 19 | 40 | Performance optimization, load testing, and API refinement | day | salma Salma Ebrahim Farouk 100, mostafa Mostafa Mohamed Abdullah Ali 40, nour Nour El-Din Osama Fathy 40 | 24,25,27 |
| 29 | · Phase 5: Frontend Development | 2025-11-01T06:00:00.000Z | 2026-03-15T15:00:00.000Z | 96 | 55 | User interface, visualization, and user experience development | day |  |  |
| 30 | · · Xi-Editor Integration & Customization | 2025-11-01T06:00:00.000Z | 2025-12-10T15:00:00.000Z | 29 | 80 | Integration of Xi-Editor with custom extensions and theming | day | mahmoud Mahmoud Emad Khairy 100 |  |
| 31 | · · File Explorer Component | 2025-11-15T06:00:00.000Z | 2025-12-15T15:00:00.000Z | 22 | 75 | Project navigation and file management interface | day | mahmoud Mahmoud Emad Khairy 100 |  |
| 32 | · · Harmony Board (Visual Workflow Designer) | 2025-12-01T06:00:00.000Z | 2026-01-31T15:00:00.000Z | 44 | 60 | Node-based visual workflow composition interface | day | mahmoud Mahmoud Emad Khairy 100 |  |
| 33 | · · Extension Marketplace UI | 2026-01-01T06:00:00.000Z | 2026-02-10T15:00:00.000Z | 29 | 50 | Orchestra Kit marketplace browsing, search, and installation UI | day | mahmoud Mahmoud Emad Khairy 100 |  |
| 34 | · · Configuration Panels Auto-Generation | 2026-01-15T06:00:00.000Z | 2026-02-20T15:00:00.000Z | 26 | 45 | Dynamic UI generation from extension manifest schemas | day | mahmoud Mahmoud Emad Khairy 100 |  |
| 35 | · · Tauri Desktop Integration | 2026-02-01T06:00:00.000Z | 2026-03-01T15:00:00.000Z | 21 | 40 | Native desktop app packaging and system integration | day | mahmoud Mahmoud Emad Khairy 100 | 30,31 |
| 36 | · · UI/UX Testing & Refinement | 2026-02-15T06:00:00.000Z | 2026-03-15T15:00:00.000Z | 21 | 30 | User testing, accessibility improvements, and UX polish | day | mahmoud Mahmoud Emad Khairy 100 | 33,34 |
| 37 | · Phase 6: Landing Page & Marketing Website | 2026-01-15T06:00:00.000Z | 2026-03-31T15:00:00.000Z | 54 | 40 | Public-facing website for downloads and documentation | day |  |  |
| 38 | · · Astro Framework Setup | 2026-01-15T06:00:00.000Z | 2026-01-25T15:00:00.000Z | 8 | 90 | Project initialization and framework configuration | day | amr Amr Muhamed Fathy 100 |  |
| 39 | · · Landing Page Design & Development | 2026-01-20T06:00:00.000Z | 2026-02-20T15:00:00.000Z | 22 | 60 | Hero section, features showcase, and download CTA | day | amr Amr Muhamed Fathy 100 | 38 |
| 40 | · · Documentation Portal | 2026-02-01T06:00:00.000Z | 2026-03-10T15:00:00.000Z | 28 | 35 | Technical documentation, guides, and API references | day | amr Amr Muhamed Fathy 80 |  |
| 41 | · · Download & Installation Flow | 2026-02-15T06:00:00.000Z | 2026-03-05T15:00:00.000Z | 14 | 50 | Platform detection, download links, and installation instructions | day | amr Amr Muhamed Fathy 100 | 39 |
| 42 | · · Marketing Content & SEO | 2026-02-20T06:00:00.000Z | 2026-03-25T15:00:00.000Z | 25 | 25 | Content creation, SEO optimization, and social media integration | day | amr Amr Muhamed Fathy 60 |  |
| 43 | · · Website Deployment | 2026-03-20T06:00:00.000Z | 2026-03-31T15:00:00.000Z | 8 | 20 | Production deployment, CDN setup, and monitoring | day | amr Amr Muhamed Fathy 100 | 40,41 |
| 44 | · Phase 7: Integration & Testing | 2026-02-15T06:00:00.000Z | 2026-04-30T15:00:00.000Z | 54 | 25 | System integration, comprehensive testing, and quality assurance | day |  |  |
| 45 | · · End-to-End Integration | 2026-02-15T06:00:00.000Z | 2026-03-20T15:00:00.000Z | 25 | 40 | Full system integration across all components | day | amr Amr Muhamed Fathy 100, mahmoud Mahmoud Emad Khairy 50 |  |
| 46 | · · Conductor 100-Iteration Testing | 2026-03-01T06:00:00.000Z | 2026-03-31T15:00:00.000Z | 22 | 30 | Predictability testing framework for Conductor orchestration | day | mostafa Mostafa Mohamed Abdullah Ali 100, nour Nour El-Din Osama Fathy 100 |  |
| 47 | · · Extension System Testing | 2026-03-10T06:00:00.000Z | 2026-04-10T15:00:00.000Z | 22 | 20 | Sandbox security, permission system, and lifecycle testing | day | mahmoud Mahmoud Emad Khairy 80, salma Salma Ebrahim Farouk 50 |  |
| 48 | · · Performance Benchmarking | 2026-03-20T06:00:00.000Z | 2026-04-15T15:00:00.000Z | 19 | 15 | System performance profiling and optimization | day | amr Amr Muhamed Fathy 80 | 45 |
| 49 | · · Security Audit | 2026-04-01T06:00:00.000Z | 2026-04-20T15:00:00.000Z | 14 | 10 | Comprehensive security review and vulnerability assessment | day | salma Salma Ebrahim Farouk 100 |  |
| 50 | · · Bug Fixing & Stabilization | 2026-04-05T06:00:00.000Z | 2026-04-30T15:00:00.000Z | 18 | 5 | Critical bug fixes and system stabilization for beta | day | amr Amr Muhamed Fathy 80, mahmoud Mahmoud Emad Khairy 60, salma Salma Ebrahim Farouk 60 | 46,47,48 |
| 51 | · Phase 8: Beta Release Preparation | 2026-04-15T06:00:00.000Z | 2026-05-15T15:00:00.000Z | 22 | 5 | Final preparations for beta launch | day |  | 44 |
| 52 | · · Beta Documentation Finalization | 2026-04-15T06:00:00.000Z | 2026-05-01T15:00:00.000Z | 12 | 10 | User guides, API docs, and quickstart tutorials | day | amr Amr Muhamed Fathy 100 |  |
| 53 | · · Distribution Package Creation | 2026-04-20T06:00:00.000Z | 2026-05-05T15:00:00.000Z | 11 | 5 | Cross-platform installers (Windows, macOS, Linux) | day | mahmoud Mahmoud Emad Khairy 100 |  |
| 54 | · · Beta Tester Onboarding Materials | 2026-04-25T06:00:00.000Z | 2026-05-08T15:00:00.000Z | 10 | 5 | Feedback forms, issue reporting templates, and communication channels | day | amr Amr Muhamed Fathy 60 |  |
| 55 | · · Analytics & Telemetry Setup | 2026-04-28T06:00:00.000Z | 2026-05-10T15:00:00.000Z | 9 | 5 | Usage tracking, crash reporting, and performance monitoring | day | salma Salma Ebrahim Farouk 100 |  |
| 56 | · · Beta Launch | 2026-05-15T15:00:00.000Z | 2026-05-15T15:00:00.000Z | 0 | 0 | 🎉 Symphony IDE Beta Release - Public Launch! | day | amr Amr Muhamed Fathy 100, mahmoud Mahmoud Emad Khairy 100, salma Salma Ebrahim Farouk 100, mostafa Mostafa Mohamed Abdullah Ali 100, nour Nour El-Din Osama Fathy 100 | 50,52,53,54,55 |

Links (from, to):
- 8 12
- 13 17
